# IRBoard development

How a schedule from MS Project changed from version to version. A marks actual dates.

## Version 1 (saved 2026-06-13)

Note of the change: docs: adds final plan and budgets

| ID | WBS | Task | Duration | Start | Finish | Predecessors | Total float | Constraint |
| --- | --- | --- | --- | --- | --- | --- | --- | --- |
| 1 | 1 | **Project management** | 121.88d | 2026-01-01 10:00 | 2026-06-22 09:00 |  | 0d |  |
| 2 |  | Design project schedule | 2h | 2026-01-01 10:00 | 2026-01-01 12:00 |  | 121.62d |  |
| 3 |  | Generate budget | 2h | 2026-01-01 13:00 | 2026-01-01 15:00 |  | 121.38d |  |
| 4 | 1.3 | **Periodic project management** | 120.12d | 2026-01-05 08:00 | 2026-06-22 09:00 |  | 0d |  |
| 5 |  | Periodic project management 1 | 1h | 2026-01-05 08:00 | 2026-01-05 09:00 |  | 120d | start no earlier than 2026-01-05 08:00 |
| 6 |  | Periodic project management 2 | 2h | 2026-01-19 08:00 | 2026-01-19 10:00 |  | 109.88d | start no earlier than 2026-01-19 08:00 |
| 7 |  | Periodic project management 3 | 1h | 2026-02-02 08:00 | 2026-02-02 09:00 |  | 100d | start no earlier than 2026-02-02 08:00 |
| 8 |  | Periodic project management 4 | 2h | 2026-02-16 08:00 | 2026-02-16 10:00 |  | 89.88d | start no earlier than 2026-02-16 08:00 |
| 9 |  | Periodic project management 5 | 1h | 2026-03-02 08:00 | 2026-03-02 09:00 |  | 80d | start no earlier than 2026-03-02 08:00 |
| 10 |  | Periodic project management 6 | 1h | 2026-03-16 08:00 | 2026-03-16 09:00 |  | 70d | start no earlier than 2026-03-16 08:00 |
| 11 |  | Periodic project management 7 | 2h | 2026-03-30 08:00 | 2026-03-30 10:00 |  | 59.88d | start no earlier than 2026-03-30 08:00 |
| 12 |  | Periodic project management 8 | 2h | 2026-04-13 08:00 | 2026-04-13 10:00 |  | 49.88d | start no earlier than 2026-04-13 08:00 |
| 13 |  | Periodic project management 9 | 2h | 2026-04-27 08:00 | 2026-04-27 10:00 |  | 39.88d | start no earlier than 2026-04-27 08:00 |
| 14 |  | Periodic project management 10 | 2h | 2026-05-11 08:00 | 2026-05-11 10:00 |  | 29.88d | start no earlier than 2026-05-11 08:00 |
| 15 |  | Periodic project management 11 | 1h | 2026-05-25 08:00 | 2026-05-25 09:00 |  | 20d | start no earlier than 2026-05-25 08:00 |
| 16 |  | Periodic project management 12 | 2h | 2026-06-08 08:00 | 2026-06-08 10:00 |  | 9.88d | start no earlier than 2026-06-08 08:00 |
| 17 |  | Periodic project management 13 | 1h | 2026-06-22 08:00 | 2026-06-22 09:00 |  | 0d | start no earlier than 2026-06-22 08:00 |
| 18 | 2 | **Analysis/Software Requirements** | 7.12d | 2026-01-01 08:00 | 2026-01-12 09:00 |  | 93.12d |  |
| 19 |  | Determine project scope | 1h | 2026-01-01 08:00 | 2026-01-01 09:00 |  | 93.12d |  |
| 20 |  | Review Regulatory Standards | 4h | 2026-01-01 09:00 | 2026-01-01 14:00 | 19 | 93.12d |  |
| 21 |  | Identify required Documentation | 1h | 2026-01-01 14:00 | 2026-01-01 15:00 | 20 | 93.12d |  |
| 22 |  | Determine hand-ins for the project | 1h | 2026-01-01 15:00 | 2026-01-01 16:00 | 21 | 93.12d |  |
| 23 |  | Adapt project template to typst | 2h | 2026-01-01 16:00 | 2026-01-02 09:00 | 22 | 93.12d |  |
| 24 |  | Analyze existing systems | 6h | 2026-01-02 09:00 | 2026-01-02 16:00 | 23 | 93.12d |  |
| 25 |  | Draft preliminary software requirements | 22h | 2026-01-02 16:00 | 2026-01-07 14:00 | 24 | 93.12d |  |
| 26 |  | Model auxiliary diagrams | 8h | 2026-01-07 14:00 | 2026-01-08 14:00 | 25 | 93.12d |  |
| 27 |  | Review software requirements | 4h | 2026-01-08 14:00 | 2026-01-09 09:00 | 26 | 93.12d |  |
| 28 |  | Modify requirements with feedback | 8h | 2026-01-09 09:00 | 2026-01-12 09:00 | 27 | 93.12d |  |
| 29 |  | Analysis complete | 0d | 2026-01-12 09:00 | 2026-01-12 09:00 | 18 | 93.12d |  |
| 30 | 4 | **Design** | 5.38d | 2026-01-12 09:00 | 2026-01-19 12:00 | 29 | 93.12d |  |
| 31 |  | Design architecture | 10h | 2026-01-12 09:00 | 2026-01-13 11:00 |  | 97.25d |  |
| 32 |  | Design brand identity | 3h | 2026-01-12 09:00 | 2026-01-12 12:00 |  | 93.12d |  |
| 33 |  | Design project management | 8h | 2026-01-12 13:00 | 2026-01-13 12:00 | 32 | 93.12d |  |
| 34 |  | Design stakeholder management | 4h | 2026-01-13 13:00 | 2026-01-13 17:00 | 33 | 93.12d |  |
| 35 |  | Design requirement management | 6h | 2026-01-14 08:00 | 2026-01-14 15:00 | 34 | 93.12d |  |
| 36 |  | Design user management | 12h | 2026-01-14 15:00 | 2026-01-16 10:00 | 35 | 93.12d |  |
| 37 |  | Design document management and diagram modelling | 10h | 2026-01-16 10:00 | 2026-01-19 12:00 | 36 | 93.12d |  |
| 38 |  | Design complete | 0d | 2026-01-19 12:00 | 2026-01-19 12:00 | 30 | 93.12d |  |
| 39 |  | Set up SonarQube for Quality Assurance | 6h | 2026-01-19 13:00 | 2026-01-20 10:00 | 38 | 93.12d |  |
| 40 | 7 | **Development** | 13.38d | 2026-01-20 10:00 | 2026-02-06 14:00 | 39 | 93.12d |  |
| 41 |  | Set up architecture | 6h | 2026-01-20 10:00 | 2026-01-20 17:00 |  | 93.12d |  |
| 42 |  | Set up development enviroment | 1h | 2026-01-21 08:00 | 2026-01-21 09:00 | 41 | 93.12d |  |
| 43 | 7.3 | **Develop code** | 12.5d | 2026-01-21 09:00 | 2026-02-06 14:00 | 42 | 93.12d |  |
| 44 |  | Develop project management module | 22h | 2026-01-21 09:00 | 2026-01-23 16:00 |  | 93.12d |  |
| 45 |  | Develop stakeholder management module | 6h | 2026-01-23 16:00 | 2026-01-26 14:00 | 44 | 93.12d |  |
| 46 |  | Develop requirement management module | 24h | 2026-01-26 14:00 | 2026-01-29 14:00 | 45 | 93.12d |  |
| 47 |  | Develop user management module | 12h | 2026-01-29 14:00 | 2026-02-02 09:00 | 46 | 93.12d |  |
| 48 |  | Develop document management and Draw.io integration | 20h | 2026-02-02 09:00 | 2026-02-04 14:00 | 47 | 93.12d |  |
| 49 |  | Develop modifying concurrency system | 10h | 2026-02-04 14:00 | 2026-02-05 16:00 | 48 | 93.12d |  |
| 50 |  | Develop search and filtering | 6h | 2026-02-05 16:00 | 2026-02-06 14:00 | 49 | 93.62d |  |
| 51 |  | Development complete | 0d | 2026-02-06 14:00 | 2026-02-06 14:00 | 40 | 95.5d |  |
| 52 | 9 | **Testing** | 15.12d? | 2026-01-19 13:00 | 2026-02-09 14:00 | 38 | 93.38d |  |
| 53 |  | Test project management module | 6h | 2026-01-27 13:00 | 2026-01-28 10:00 | 44 | 101.75d |  |
| 54 |  | Test stakeholder management module | 4h | 2026-01-26 14:00 | 2026-01-27 09:00 | 45 | 102.88d |  |
| 55 |  | Test requirement management module | 5h | 2026-01-30 15:00 | 2026-02-02 11:00 | 46 | 98.62d |  |
| 56 |  | Test user management module | 3h | 2026-02-02 09:00 | 2026-02-02 12:00 | 47 | 98.5d |  |
| 57 |  | Test document management and Draw.io integration | 4h | 2026-02-04 14:00 | 2026-02-05 09:00 | 48 | 95.88d |  |
| 58 |  | Test modifying concurrency system | 5h | 2026-02-09 08:00 | 2026-02-09 14:00 | 49 | 93.38d |  |
| 59 |  | Test search and filtering | 3h | 2026-02-06 14:00 | 2026-02-06 17:00 | 50 | 94d |  |
| 60 |  | Accesibility testing | 3h? | 2026-01-19 13:00 | 2026-01-19 16:00 |  | 108.12d |  |
| 61 |  | Load testing | 8h? | 2026-01-22 08:00 | 2026-01-22 17:00 |  | 105d |  |
| 62 |  | Testing complete | 0h | 2026-02-09 14:00 | 2026-02-09 14:00 | 52 | 94.5d |  |
| 63 | 11 | **Documentation** | 28.75d | 2026-01-01 08:00 | 2026-02-10 15:00 |  | 93.38d |  |
| 64 |  | Document declaration of originality, abstract and keywords | 1h | 2026-01-01 08:00 | 2026-01-01 09:00 |  | 115.75d |  |
| 65 |  | Document introduction | 1h | 2026-01-01 09:00 | 2026-01-01 10:00 | 64 | 115.75d |  |
| 66 |  | Document theoretical background | 1h | 2026-01-01 14:00 | 2026-01-01 15:00 | 65 | 115.38d |  |
| 67 |  | Document feasibility study and alternative analysis | 2h | 2026-01-01 15:00 | 2026-01-01 17:00 | 66 | 115.38d |  |
| 68 |  | Document Initial project planning and management | 3h | 2026-01-02 08:00 | 2026-01-02 11:00 | 67 | 115.38d |  |
| 69 |  | Document system analysis | 2h | 2026-01-02 11:00 | 2026-01-02 14:00 | 68 | 115.38d |  |
| 70 |  | Document system design | 3h | 2026-01-16 08:00 | 2026-01-16 11:00 | 18, 69 | 108.88d |  |

| ID | Task | Duration | Start | Finish | Predecessors | Total float |
| --- | --- | --- | --- | --- | --- | --- |
| 71 | Document system implementation | 6h | 2026-02-06 14:00 | 2026-02-09 11:00 | 40, 70 | 93.62d |
| 72 | Document test plan execution | 2h | 2026-02-09 14:00 | 2026-02-09 16:00 | 71, 52 | 93.38d |
| 73 | Document system manuals | 5h | 2026-02-09 16:00 | 2026-02-10 12:00 | 72 | 93.38d |
| 74 | Document final project closure | 1h | 2026-02-10 13:00 | 2026-02-10 14:00 | 73 | 93.38d |
| 75 | Document conclusions and future work | 1h | 2026-02-10 14:00 | 2026-02-10 15:00 | 74 | 93.38d |
| 76 | Documentation complete | 0d | 2026-02-10 15:00 | 2026-02-10 15:00 | 63 | 93.38d |

## Version 2 (saved 2026-06-16)

Note of the change: docs: documents initial planning

Last finish 2026-06-22 → 2026-02-13 (-129d).

Changed:

| ID | Task | Start | Finish | Duration | Total float | Other |
| --- | --- | --- | --- | --- | --- | --- |
| 1 | **Project management** |  | 2026-06-22 09:00 → 2026-02-13 10:00 (-129d) | 121.88d → 31d |  |  |
| 4 | **Periodic project management** | 2026-01-05 08:00 → 2026-01-02 08:00 (-3d) | 2026-06-22 09:00 → 2026-02-13 10:00 (-129d) | 120.12d → 30.25d |  |  |
| 5 | Periodic project management 1 | 2026-01-05 08:00 → 2026-01-02 08:00 (-3d) | 2026-01-05 09:00 → 2026-01-02 09:00 (-3d) |  | 120d → 30.12d | constraint start no earlier than 2026-01-05 08:00 → start no earlier than 2026-01-02 08:00 |
| 6 | Periodic project management 2 | 2026-01-19 08:00 → 2026-01-05 08:00 (-14d) | 2026-01-19 10:00 → 2026-01-05 10:00 (-14d) |  | 109.88d → 29d | constraint start no earlier than 2026-01-19 08:00 → start no earlier than 2026-01-05 08:00 |
| 7 | Periodic project management 3 | 2026-02-02 08:00 → 2026-01-09 08:00 (-24d) | 2026-02-02 09:00 → 2026-01-09 09:00 (-24d) |  | 100d → 25.12d | constraint start no earlier than 2026-02-02 08:00 → start no earlier than 2026-01-09 08:00 |
| 8 | Periodic project management 4 | 2026-02-16 08:00 → 2026-01-12 08:00 (-35d) | 2026-02-16 10:00 → 2026-01-12 10:00 (-35d) |  | 89.88d → 24d | constraint start no earlier than 2026-02-16 08:00 → start no earlier than 2026-01-12 08:00 |
| 9 | Periodic project management 5 | 2026-03-02 08:00 → 2026-01-16 08:00 (-45d) | 2026-03-02 09:00 → 2026-01-16 09:00 (-45d) |  | 80d → 20.12d | constraint start no earlier than 2026-03-02 08:00 → start no earlier than 2026-01-16 08:00 |
| 10 | Periodic project management 6 | 2026-03-16 08:00 → 2026-01-19 08:00 (-56d) | 2026-03-16 09:00 → 2026-01-19 09:00 (-56d) |  | 70d → 19.12d | constraint start no earlier than 2026-03-16 08:00 → start no earlier than 2026-01-19 08:00 |
| 11 | Periodic project management 7 | 2026-03-30 08:00 → 2026-01-23 08:00 (-66d) | 2026-03-30 10:00 → 2026-01-23 10:00 (-66d) |  | 59.88d → 15d | constraint start no earlier than 2026-03-30 08:00 → start no earlier than 2026-01-23 08:00 |
| 12 | Periodic project management 8 | 2026-04-13 08:00 → 2026-01-26 08:00 (-77d) | 2026-04-13 10:00 → 2026-01-26 10:00 (-77d) |  | 49.88d → 14d | constraint start no earlier than 2026-04-13 08:00 → start no earlier than 2026-01-26 08:00 |
| 13 | Periodic project management 9 | 2026-04-27 08:00 → 2026-01-30 08:00 (-87d) | 2026-04-27 10:00 → 2026-01-30 10:00 (-87d) |  | 39.88d → 10d | constraint start no earlier than 2026-04-27 08:00 → start no earlier than 2026-01-30 08:00 |
| 14 | Periodic project management 10 | 2026-05-11 08:00 → 2026-02-02 08:00 (-98d) | 2026-05-11 10:00 → 2026-02-02 10:00 (-98d) |  | 29.88d → 9d | constraint start no earlier than 2026-05-11 08:00 → start no earlier than 2026-02-02 08:00 |
| 15 | Periodic project management 11 | 2026-05-25 08:00 → 2026-02-06 08:00 (-108d) | 2026-05-25 09:00 → 2026-02-06 09:00 (-108d) |  | 20d → 5.12d | constraint start no earlier than 2026-05-25 08:00 → start no earlier than 2026-02-06 08:00 |
| 16 | Periodic project management 12 | 2026-06-08 08:00 → 2026-02-09 08:00 (-119d) | 2026-06-08 10:00 → 2026-02-09 09:00 (-119d) | 2h → 1h | 9.88d → 4.12d | constraint start no earlier than 2026-06-08 08:00 → start no earlier than 2026-02-09 08:00 |
| 17 | Periodic project management 13 | 2026-06-22 08:00 → 2026-02-13 08:00 (-129d) | 2026-06-22 09:00 → 2026-02-13 10:00 (-129d) | 1h → 2h |  | constraint start no earlier than 2026-06-22 08:00 → start no earlier than 2026-02-13 08:00 |

## Version 3 (saved 2026-06-20)

Note of the change: docs: documents final budget and final planning

Last finish stays 2026-02-13.

Changed:

| ID | Task | Other |
| --- | --- | --- |
| 48 | Develop document management | was named Develop document management and Draw.io integration |
| 57 | Test document management | was named Test document management and Draw.io integration |
| 60 | Usability and accesibility testing | was named Accesibility testing |
